# Extension de bureaux

Schedule from MS Project XML, 2026-11-02 to 2026-12-16.

## Calendars

- Standard: Mon-Fri 08:00-12:00, 13:00-17:00; Sat-Sun off.

## Resources

| Resource |
| --- |
| Maçon |
| Plaquiste |
| Électricien |

## Schedule

| ID | WBS | Task | Type | Duration | Start | Finish | Predecessors | Baseline start | Baseline finish | Baseline duration | Total slack | Free slack | Constraint | Resources | Work |
| --- | --- | --- | --- | --- | --- | --- | --- | --- | --- | --- | --- | --- | --- | --- | --- |
| 1 | 1 | **Gros œuvre** |  | 10d? | 2026-11-02 | 2026-11-13 |  | 2026-11-02 | 2026-11-13 | 10d? | 0d |  |  |  | 104h |
| 2 | 1.1 | Terrassement |  | 2d | 2026-11-02 | 2026-11-03 |  | 2026-11-02 | 2026-11-03 | 2d | 0d |  |  |  |  |
| 3 | 1.2 | Maçonnerie |  | 10d | 2026-11-02 | 2026-11-13 | 2SS | 2026-11-02 | 2026-11-13 | 10d | 0d |  |  | Maçon | 80h |
| 4 | 1.3 | Réseaux enterrés |  | 3d | 2026-11-04 | 2026-11-06 | 2 | 2026-11-04 | 2026-11-06 | 3d | 23d | 0d |  |  |  |
| 5 | 1.4 | Fondations du local technique |  | 3d | 2026-11-09 | 2026-11-11 | 4 | 2026-11-09 | 2026-11-11 | 3d | 23d | 2d |  | Maçon | 24h |
| 6 | 1.5 | Gros œuvre terminé | milestone | 0d | 2026-11-13 | 2026-11-13 | 3, 5 | 2026-11-13 | 2026-11-13 | 0d | 21d | 20d |  |  |  |
| 7 | 2 | **Clos couvert et second œuvre** |  | 15d? | 2026-11-16 | 2026-12-04 |  | 2026-11-16 | 2026-12-04 | 15d? | 0d |  |  |  | 64h |
| 8 | 2.1 | Charpente et couverture |  | 4d | 2026-11-16 | 2026-11-19 | 3 | 2026-11-16 | 2026-11-19 | 4d | 0d |  |  |  |  |
| 9 | 2.2 | Menuiseries extérieures |  | 3d | 2026-11-20 | 2026-11-24 | 8 | 2026-11-20 | 2026-11-24 | 3d | 0d |  |  |  |  |
| 10 | 2.3 | Cloisons et doublages |  | 5d | 2026-11-25 | 2026-12-01 | 9 | 2026-11-25 | 2026-12-01 | 5d | 0d |  |  | Plaquiste | 40h |
| 11 | 2.4 | Électricité |  | 4d | 2026-11-25 | 2026-11-30 | 9 | 2026-11-25 | 2026-11-30 | 4d | 2d | 0d |  |  |  |
| 12 | 2.5 | Plomberie |  | 3d | 2026-11-25 | 2026-11-27 | 9 | 2026-11-25 | 2026-11-27 | 3d | 5d |  |  |  |  |
| 13 | 2.6 | Ventilation |  | 2d | 2026-12-01 | 2026-12-02 | 11 | 2026-12-01 | 2026-12-02 | 2d | 2d |  |  |  |  |
| 14 | 2.7 | Bandes et enduits |  | 3d | 2026-12-02 | 2026-12-04 | 10 | 2026-12-02 | 2026-12-04 | 3d | 0d |  |  | Plaquiste | 24h |
| 15 | 3 | **Finitions** |  | 8d? | 2026-12-07 | 2026-12-16 |  | 2026-12-07 | 2026-12-16 | 8d? | 0d |  |  |  |  |
| 16 | 3.1 | Peinture |  | 4d | 2026-12-07 | 2026-12-10 | 14, 13, 12 | 2026-12-07 | 2026-12-10 | 4d | 0d |  |  |  |  |
| 17 | 3.2 | Revêtements de sol |  | 3d | 2026-12-11 | 2026-12-15 | 16 | 2026-12-11 | 2026-12-15 | 3d | 0d |  |  |  |  |
| 18 | 3.3 | Raccordement au réseau public |  | 1d | 2026-12-14 | 2026-12-14 | 6 | 2026-12-14 | 2026-12-14 | 1d | 1d |  | start no earlier than 2026-12-14 |  |  |
| 19 | 3.4 | Nettoyage de fin de chantier |  | 1d | 2026-12-16 | 2026-12-16 | 17, 18 | 2026-12-16 | 2026-12-16 | 1d | 0d |  |  |  |  |
| 20 | 3.5 | Réception des travaux | milestone | 0d | 2026-12-16 | 2026-12-16 | 19 | 2026-12-16 | 2026-12-16 | 0d | 0d |  |  |  |  |
